| activity_id | activity_name | forecast_start | forecast_finish | total_float | forecast_date | movement_days |
| --- | --- | --- | --- | --- | --- | --- |
| FM-PERMPOWER | PERM POWER | 2026-06-10 16:00 | 2026-06-10 16:00 | -472.0 | 2026-06-10 16:00 | 83 |
| FM-CNSTELEVS | ELEVATORS FOR CONSTRUCTION USE | 2026-06-29 16:00 | 2026-06-29 16:00 | -216.0 | 2026-06-29 16:00 | 83 |
| FILTER-OUT-30 | PHASE 1 INTERIOR COMPLETION | 2026-07-29 16:00 | 2026-07-29 16:00 | -400.0 | 2026-07-29 16:00 | 35 |
| FILTER-OUT-20 | ENVELOPE COMPLETION | 2026-07-30 16:00 | 2026-07-30 16:00 | -392.0 | 2026-07-30 16:00 | 28 |
| FM-P1A-AMEN- GTURN | TCO-1- AMENITIES TURNOVER | 2026-08-05 16:00 | 2026-08-05 16:00 | -240.0 | 2026-08-05 16:00 | 50 |
| FM-P1A-SITEDEV | TCO-1- SITE DEVELOPMENT COMPLETE | 2026-08-05 16:00 | 2026-08-05 16:00 | -368.0 | 2026-08-05 16:00 | 50 |
| FILTER-OUT-40 | PHASE 2 INTERIOR COMPLETION | 2026-08-06 16:00 | 2026-08-06 16:00 | -528.0 | 2026-08-06 16:00 | 41 |
| FM-SITEWATER | SITE WATER AVAILABLE | 2026-08-07 16:00 | 2026-08-07 16:00 | -136.0 | 2026-08-07 16:00 | 56 |
| FILTER-OUT-10 | SITE COMPLETION | 2026-08-07 16:00 | 2026-08-07 16:00 | -456.0 | 2026-08-07 16:00 | 38 |
| U14-AVAILABLE-10 | LEASING & AMENITIES AVAILABILE | 2026-08-14 16:00 | 2026-08-14 16:00 | -176.0 | 2026-08-14 16:00 | 17 |
| U14-AVAILABLE-20 | UNITS 1 - 33 AVAILABLE (PHASE 1) | 2026-08-14 16:00 | 2026-08-14 16:00 | -176.0 | 2026-08-14 16:00 | 17 |
| U14-AVAILABLE-30 | UNITS 34 - 66 AVAILABLE (PHASE 1) | 2026-08-14 16:00 | 2026-08-14 16:00 | -176.0 | 2026-08-14 16:00 | 17 |
| U14-AVAILABLE-40 | UNITS 67 - 99 AVAILABLE (PHASE 1) | 2026-08-14 16:00 | 2026-08-14 16:00 | -176.0 | 2026-08-14 16:00 | 17 |
| FM-P1A-GTURN | TCO-1- TURNOVER 99 UNITS | 2026-08-14 16:00 | 2026-08-14 16:00 | -176.0 | 2026-08-14 16:00 | 32 |
| FM-P1A-GSUBCOMP | TCO-1- SUBSTANTIAL COMPLETION / TCO | 2026-08-14 16:00 | 2026-08-14 16:00 | -176.0 | 2026-08-14 16:00 | 32 |
| FM-P1A-AMEN- OTURN | TCO-1- AMENITIES TURNOVER | 2026-08-14 16:00 | 2026-08-14 16:00 | -176.0 | 2026-08-14 16:00 | 17 |
| FM-P1A-OTURN | TCO-1- TURNOVER 99 UNITS | 2026-08-14 16:00 | 2026-08-14 16:00 | -176.0 | 2026-08-14 16:00 | 17 |
| FILTER-OUT-50 | PHASE 3 INTERIOR COMPLETION | 2026-09-10 16:00 | 2026-09-10 16:00 | -624.0 | 2026-09-10 16:00 | 91 |
| U14-AVAILABLE-50 | UNITS 100 - 120 AVAILABLE (PHASE 2) | 2026-09-15 16:00 | 2026-09-15 16:00 | -560.0 | 2026-09-15 16:00 | 47 |
| U14-AVAILABLE-80 | UNITS 121 - 141 AVAILABLE (PHASE 2) | 2026-09-15 16:00 | 2026-09-15 16:00 | -560.0 | 2026-09-15 16:00 | 47 |

Links (activity_id, activity_name, wbs_code, display_wbs, wbs_context_reason, finish_delta_days, start_delta_days, duration_delta_days, float_delta_days, downstream_moved_later_count, milestone_touch_count, float_degradation_score, logic_change_count, predecessor_count_delta, successor_count_delta, computed_cpm_critical, computed_cpm_near_critical, dominant_impacted_wbs, top_milestone_name, review_priority, driver_score, movement_basis, context_quality, missing_context_reasons, sequence_cue, impacted_successors_preview):
- FAB/DEL-10 FAB/DEL EXTERIOR LIGHT FIXTURES — WBS was not present in the comparison row. 116 0 -304.0 17 16 5064.0 0 0 0   — ENVELOPE COMPLETION 100 5507.0 self_finish_moved medium wbs_missing_from_comparison_row, wbs_missing Sequence cue only — review logic and dates; not a causation finding. U14-PCY-S-60 BUILDING EXTERIOR LIGHTS 2026-02-12 08:00 2026-06-11 08:00 119 2026-02-16 16:00 2026-06-15 16:00 119 496.0 -136.0 -632.0   FILTER-OUT-20 ENVELOPE COMPLETION Sequence cue only — review logic and dates; not a causation finding. 2, P2-NWECY-D1/2-60 BUILDING EXTERIOR LIGHTS 2026-02-16 08:00 2026-06-08 08:00 112 2026-02-18 16:00 2026-06-10 16:00 112 16.0 -216.0 -232.0   FILTER-OUT-20 ENVELOPE COMPLETION Sequence cue only — review logic and dates; not a causation finding. 1, P1A-NORTH-B/C1-50 BUILDING EXTERIOR LIGHTS 2026-02-12 08:00 2026-06-01 08:00 109 2026-02-18 16:00 2026-06-05 16:00 107 440.0 -216.0 -656.0   FILTER-OUT-20 ENVELOPE COMPLETION Sequence cue only — review logic and dates; not a causation finding. 1, P2-EAST-D1/2-70 GUTTERS 2026-04-08 08:00 2026-07-10 08:00 93 2026-04-10 16:00 2026-07-16 16:00 97 -192.0 -312.0 -120.0   FILTER-OUT-20 ENVELOPE COMPLETION Sequence cue only — review logic and dates; not a causation finding. 2, P2-NORTH-D1/2-50 BUILDING EXTERIOR LIGHTS 2026-03-19 08:00 2026-06-11 08:00 84 2026-03-25 16:00 2026-06-17 16:00 84 -144.0 -216.0 -72.0   FILTER-OUT-20 ENVELOPE COMPLETION Sequence cue only — review logic and dates; not a causation finding. 1, P2-EAST-D1/2-50 BUILDING EXTERIOR LIGHTS 2026-03-26 08:00 2026-06-18 08:00 84 2026-03-30 16:00 2026-06-22 16:00 84 -144.0 -216.0 -72.0   FILTER-OUT-20 ENVELOPE COMPLETION Sequence cue only — review logic and dates; not a causation finding. 1, P1A-EAST-C1-50 BUILDING EXTERIOR LIGHTS - (MODIFIED FROM SECTOR C1 TO A) 2026-03-20 08:00 2026-06-08 08:00 80 2026-03-23 16:00 2026-06-09 16:00 78 296.0 -104.0 -400.0   FILTER-OUT-20 ENVELOPE COMPLETION Sequence cue only — review logic and dates; not a causation finding. 1, P1A-SOUTH-C1/B-50 BUILDING EXTERIOR LIGHTS - (MODIFIED FROM SECTOR C1 TO A) 2026-03-13 08:00 2026-06-01 08:00 80 2026-03-19 16:00 2026-06-05 16:00 78 296.0 -104.0 -400.0   FILTER-OUT-20 ENVELOPE COMPLETION Sequence cue only — review logic and dates; not a causation finding. 1, P1A-EAST-A-70 BUILDING EXTERIOR LIGHTS - East Elev. 2026-03-26 08:00 2026-06-11 08:00 77 2026-04-01 16:00 2026-06-17 16:00 77 240.0 -152.0 -392.0   FILTER-OUT-20 ENVELOPE COMPLETION Sequence cue only — review logic and dates; not a causation finding. 1, P1A-SOUTH-A-70 BUILDING EXTERIOR LIGHTS - South Elev. 2026-03-23 08:00 2026-06-08 08:00 77 2026-03-25 16:00 2026-06-10 16:00 77 240.0 -152.0 -392.0   FILTER-OUT-20 ENVELOPE COMPLETION Sequence cue only — review logic and dates; not a causation finding. 1
- FAB/DEL-210 FAB/DEL WINDOW TREATMENT — WBS was not present in the comparison row. 84 0 -464.0 50 31 12288.0 0 0 0   — PHASE 3 INTERIOR COMPLETION 100 12916.0 self_finish_moved medium wbs_missing_from_comparison_row, wbs_missing Sequence cue only — review logic and dates; not a causation finding. FILTER-OUT-50 PHASE 3 INTERIOR COMPLETION 2026-06-11 16:00 2026-09-10 16:00 91 2026-06-11 16:00 2026-09-10 16:00 91 -120.0 -624.0 -504.0   FILTER-OUT-50 PHASE 3 INTERIOR COMPLETION Sequence cue only — review logic and dates; not a causation finding. 2, P1B-02C-FIN-90 INSTALL FLOORING & BASE AT CORRIDOR 2026-05-20 08:00 2026-08-17 08:00 89 2026-05-20 16:00 2026-08-17 16:00 89 -176.0 -536.0 -360.0   FM-P1B-GSUBCOMP TCO-3- SUBSTANTIAL COMPLETION / TCO, FILTER-OUT-50 PHASE 3 INTERIOR COMPLETION Sequence cue only — review logic and dates; not a causation finding. 3, P1B-01U-FIN-280 INSTALL WINDOW TREATMENTS 2026-05-20 08:00 2026-08-13 08:00 85 2026-05-21 16:00 2026-08-14 16:00 85 -8.0 -480.0 -472.0   FILTER-OUT-50 PHASE 3 INTERIOR COMPLETION Sequence cue only — review logic and dates; not a causation finding. 1, P2-02U-FIN-280 INSTALL WINDOW TREATMENTS 2026-05-07 08:00 2026-07-24 08:00 78 2026-05-08 16:00 2026-07-27 16:00 80 -88.0 -560.0 -472.0   FILTER-OUT-40 PHASE 2 INTERIOR COMPLETION, FM-P2B-GSUBCOMP TCO-2- SUBSTANTIAL COMPLETION / TCO Sequence cue only — review logic and dates; not a causation finding. 1, P1B-02U-FIN-280 INSTALL WINDOW TREATMENTS 2026-05-14 08:00 2026-07-29 08:00 76 2026-05-15 16:00 2026-07-30 16:00 76 -176.0 -464.0 -288.0   FILTER-OUT-50 PHASE 3 INTERIOR COMPLETION, FM-P1B-GSUBCOMP TCO-3- SUBSTANTIAL COMPLETION / TCO Sequence cue only — review logic and dates; not a causation finding. 1, P2-03U-FIN-280 INSTALL WINDOW TREATMENTS 2026-05-14 08:00 2026-07-29 08:00 76 2026-05-15 16:00 2026-07-30 16:00 76 -128.0 -528.0 -400.0   FILTER-OUT-40 PHASE 2 INTERIOR COMPLETION, FM-P2B-GSUBCOMP TCO-2- SUBSTANTIAL COMPLETION / TCO, FM-P1B-GSUBCOMP TCO-3- SUBSTANTIAL COMPLETION / TCO, FILTER-OUT-50 PHASE 3 INTERIOR COMPLETION Sequence cue only — review logic and dates; not a causation finding. 1, P1B-02U-FIN-240 GC PUNCH UNITS 2026-05-18 08:00 2026-07-31 08:00 74 2026-05-19 16:00 2026-08-03 16:00 76 -176.0 -464.0 -288.0   FILTER-OUT-50 PHASE 3 INTERIOR COMPLETION, FM-P1B-GSUBCOMP TCO-3- SUBSTANTIAL COMPLETION / TCO Sequence cue only — review logic and dates; not a causation finding. 2, P1B-02U-FIN-250 OWNER WALK UNITS 2026-05-20 08:00 2026-08-04 08:00 76 2026-05-20 16:00 2026-08-04 16:00 76 -24.0 -440.0 -416.0   FILTER-OUT-50 PHASE 3 INTERIOR COMPLETION Sequence cue only — review logic and dates; not a causation finding. 3, P1B-02U-FIN-260 OWNER PUNCH UNITS 2026-05-21 08:00 2026-08-05 08:00 76 2026-05-22 16:00 2026-08-06 16:00 76 -24.0 -440.0 -416.0   FILTER-OUT-50 PHASE 3 INTERIOR COMPLETION Sequence cue only — review logic and dates; not a causation finding. 4, P1B-03C-FIN-90 INSTALL FLOORING & BASE AT CORRIDOR 2026-06-01 08:00 2026-08-13 08:00 73 2026-06-01 16:00 2026-08-13 16:00 73 -216.0 -520.0 -304.0   FM-P1B-GSUBCOMP TCO-3- SUBSTANTIAL COMPLETION / TCO, FILTER-OUT-50 PHASE 3 INTERIOR COMPLETION Sequence cue only — review logic and dates; not a causation finding. 3
- FAB/DEL-240 OWNER FAB/DEL IDENTIFICATION SIGNS — WBS was not present in the comparison row. 42 0 -232.0 50 27 16296.0 0 0 0   — PHASE 3 INTERIOR COMPLETION 100 16800.0 self_finish_moved medium wbs_missing_from_comparison_row, wbs_missing Sequence cue only — review logic and dates; not a causation finding. P1B-01C-FIN-130 OWNER PUNCH CORRIDOR 2026-05-21 08:00 2026-09-08 08:00 110 2026-05-22 16:00 2026-09-09 16:00 110 -24.0 -624.0 -600.0   FILTER-OUT-50 PHASE 3 INTERIOR COMPLETION Sequence cue only — review logic and dates; not a causation finding. 4, P1B-01C-FIN-150 OWNER INSTALL SIGNAGE AT CORRIDOR 2026-05-18 08:00 2026-09-02 08:00 107 2026-05-18 16:00 2026-09-02 16:00 107 -16.0 -616.0 -600.0   FILTER-OUT-50 PHASE 3 INTERIOR COMPLETION Sequence cue only — review logic and dates; not a causation finding. 1, P1B-01C-FIN-110 GC PUNCH CORRIDOR 2026-05-18 08:00 2026-09-02 08:00 107 2026-05-19 16:00 2026-09-03 16:00 107 -24.0 -624.0 -600.0   FILTER-OUT-50 PHASE 3 INTERIOR COMPLETION Sequence cue only — review logic and dates; not a causation finding. 2, P1B-01C-FIN-120 OWNER WALK CORRIDOR 2026-05-20 08:00 2026-09-04 08:00 107 2026-05-20 16:00 2026-09-04 16:00 107 -24.0 -624.0 -600.0   FILTER-OUT-50 PHASE 3 INTERIOR COMPLETION Sequence cue only — review logic and dates; not a causation finding. 3, FILTER-OUT-50 PHASE 3 INTERIOR COMPLETION 2026-06-11 16:00 2026-09-10 16:00 91 2026-06-11 16:00 2026-09-10 16:00 91 -120.0 -624.0 -504.0   FILTER-OUT-50 PHASE 3 INTERIOR COMPLETION Sequence cue only — review logic and dates; not a causation finding. 2, P1B-02C-FIN-150 OWNER INSTALL SIGNAGE AT CORRIDOR 2026-05-26 08:00 2026-08-18 08:00 84 2026-05-26 16:00 2026-08-18 16:00 84 -56.0 -528.0 -472.0   FILTER-OUT-50 PHASE 3 INTERIOR COMPLETION Sequence cue only — review logic and dates; not a causation finding. 1, P1B-02C-FIN-110 GC PUNCH CORRIDOR 2026-05-26 08:00 2026-08-18 08:00 84 2026-05-27 16:00 2026-08-19 16:00 84 -64.0 -536.0 -472.0   FILTER-OUT-50 PHASE 3 INTERIOR COMPLETION Sequence cue only — review logic and dates; not a causation finding. 2, P1B-02C-FIN-120 OWNER WALK CORRIDOR 2026-05-28 08:00 2026-08-20 08:00 84 2026-05-28 16:00 2026-08-20 16:00 84 -64.0 -536.0 -472.0   FILTER-OUT-50 PHASE 3 INTERIOR COMPLETION Sequence cue only — review logic and dates; not a causation finding. 3, P1B-02C-FIN-130 OWNER PUNCH CORRIDOR 2026-05-29 08:00 2026-08-21 08:00 84 2026-06-01 16:00 2026-08-24 16:00 84 -64.0 -536.0 -472.0   FILTER-OUT-50 PHASE 3 INTERIOR COMPLETION Sequence cue only — review logic and dates; not a causation finding. 4, P1A-03C-FIN-150 OWNER INSTALL SIGNAGE AT CORRIDOR 2026-04-20 08:00 2026-07-06 08:00 77 2026-04-20 16:00 2026-07-06 16:00 77 144.0 -264.0 -408.0   FILTER-OUT-30 PHASE 1 INTERIOR COMPLETION Sequence cue only — review logic and dates; not a causation finding. 1
- FAB/DEL-260 FAB/DEL MAIL BOXES — WBS was not present in the comparison row. 165 325 -792.0 10 8 2632.0 0 0 0   — PHASE 1 INTERIOR COMPLETION 100 3397.0 self_finish_moved medium wbs_missing_from_comparison_row, wbs_missing Sequence cue only — review logic and dates; not a causation finding. P1A-PACKAGE-10 INSTALL MAIL BOXES 2026-02-25 08:00 2026-07-27 08:00 152 2026-02-27 16:00 2026-07-29 16:00 152 304.0 -400.0 -704.0   FILTER-OUT-30 PHASE 1 INTERIOR COMPLETION, FM-P1B-GSUBCOMP TCO-3- SUBSTANTIAL COMPLETION / TCO Sequence cue only — review logic and dates; not a causation finding. 1, FM-P1B-GSUBCOMP TCO-3- SUBSTANTIAL COMPLETION / TCO 2026-07-08 16:00 2026-10-13 16:00 97 2026-07-08 16:00 2026-10-13 16:00 97 0.0 -504.0 -504.0   FM-P1B-GSUBCOMP TCO-3- SUBSTANTIAL COMPLETION / TCO Sequence cue only — review logic and dates; not a causation finding. 3, FM-P1B-GTURN TCO-3- TURNOVER 46 UNITS 2026-07-08 16:00 2026-10-13 16:00 97 2026-07-08 16:00 2026-10-13 16:00 97 0.0 -504.0 -504.0   FM-P1B-GTURN TCO-3- TURNOVER 46 UNITS Sequence cue only — review logic and dates; not a causation finding. 4, P1B-FINBLDG FINAL BUILDING INSPECTIONS FOR PHASE II 65 UNITS TURNOVER 2026-06-17 08:00 2026-09-02 08:00 77 2026-07-08 16:00 2026-09-23 16:00 77 -304.0 -392.0 -88.0   FM-P1B-GSUBCOMP TCO-3- SUBSTANTIAL COMPLETION / TCO Sequence cue only — review logic and dates; not a causation finding. 2, FILTER-OUT-30 PHASE 1 INTERIOR COMPLETION 2026-06-24 16:00 2026-07-29 16:00 35 2026-06-24 16:00 2026-07-29 16:00 35 -224.0 -400.0 -176.0   FILTER-OUT-30 PHASE 1 INTERIOR COMPLETION Sequence cue only — review logic and dates; not a causation finding. 2, U13-P1CO-20 FINAL PBC ZONING & ENGINEERING INSPECTIONS 2026-07-01 08:00 2026-08-10 08:00 40 2026-07-08 16:00 2026-08-12 16:00 35 -256.0 -456.0 -200.0   Sequence cue only — review logic and dates; not a causation finding. 4, U13-P1CO-50 PRIVATE PROVIDER CERTIFICATION LETTER APPROVAL 2026-07-10 08:00 2026-08-07 08:00 28 2026-07-14 16:00 2026-08-10 16:00 27 -152.0 -240.0 -88.0   U14-AVAILABLE-20 UNITS 1 - 33 AVAILABLE (PHASE 1), U14-AVAILABLE-30 UNITS 34 - 66 AVAILABLE (PHASE 1), U14-AVAILABLE-40 UNITS 67 - 99 AVAILABLE (PHASE 1) Sequence cue only — review logic and dates; not a causation finding. 4, U13-P1CO-30 FINAL PRIVATE PROVIDER INSPECTIONS 2026-06-25 08:00 2026-07-30 08:00 35 2026-07-09 16:00 2026-08-03 16:00 25 -224.0 -400.0 -176.0   U14-AVAILABLE-20 UNITS 1 - 33 AVAILABLE (PHASE 1), U14-AVAILABLE-30 UNITS 34 - 66 AVAILABLE (PHASE 1), U14-AVAILABLE-40 UNITS 67 - 99 AVAILABLE (PHASE 1) Sequence cue only — review logic and dates; not a causation finding. 3, U13-P1CO-40 FINAL PBC FIRE DEPARTMENT INSPECTIONS 2026-07-08 08:00 2026-08-04 08:00 27 2026-07-14 16:00 2026-08-06 16:00 23 -152.0 -240.0 -88.0   Sequence cue only — review logic and dates; not a causation finding. 4, U13-P1CO-60 PARTIAL TCO APPLICATION, APPROVAL, & ISSUANCE 2026-07-15 08:00 2026-08-13 08:00 29 2026-07-28 16:00 2026-08-14 16:00 17 -152.0 -256.0 -104.0   U14-AVAILABLE-10 LEASING & AMENITIES AVAILABILE, U14-AVAILABLE-20 UNITS 1 - 33 AVAILABLE (PHASE 1), U14-AVAILABLE-30 UNITS 34 - 66 AVAILABLE (PHASE 1), U14-AVAILABLE-40 UNITS 67 - 99 AVAILABLE (PHASE 1) Sequence cue only — review logic and dates; not a causation finding. 4
