# GMA Model Spec Home

Schedule from Primavera P6, 2026-09-07 to 2028-06-09, data date 2026-09-07.

## Calendars

- Standard: Mon-Fri 08:00-11:59, 13:00-16:59; Sat-Sun off.

## Schedule

| ID | WBS | Activity | Type | Duration | Start | Finish | Predecessors | Constraint | HB Cost Code |
| --- | --- | --- | --- | --- | --- | --- | --- | --- | --- |
|  | 1 | **Lot 75 Spec House – Albany Bahamas** |  |  | 2026-09-07 | 2028-06-09 |  |  |  |
|  | 1 | **Pre-Construction & Permitting** |  |  | 2027-01-04 | 2027-03-19 |  |  |  |
| PERM-ALBANY-EH1-1000 |  | Permit Application – Building/structural Submission | resource dependent | 15d | 2027-01-04 | 2027-01-22 |  | start on or after 2027-01-04 | 15-01-105 |
| PERM-ALBANY-EH1-1010 |  | Albany AHJ Plan Review & Permit Issuance | resource dependent | 30d | 2027-01-25 | 2027-03-05 | PERM-ALBANY-EH1-1000 |  | 15-01-105 |
| PERM-ALBANY-EH1-1020 |  | Geotechnical Report Review – 3,000 Psf Bearing Confirm | resource dependent | 5d | 2027-01-25 | 2027-01-29 | PERM-ALBANY-EH1-1000 |  | 15-01-105 |
| PERM-ALBANY-EH1-1030 |  | Structural Shop Drawing Package Prep (piles/rebar/trusses) | resource dependent | 10d | 2027-01-25 | 2027-02-05 | PERM-ALBANY-EH1-1000 |  | 15-01-105 |
| PERM-ALBANY-EH1-1040 |  | Concrete Mix Design Submittal & Lab Approval | resource dependent | 5d | 2027-01-25 | 2027-01-29 | PERM-ALBANY-EH1-1000 |  | 15-01-105 |
| PERM-ALBANY-EH1-1050 |  | Eor Review & Approval – Piles, Grade Beams, Columns | resource dependent | 7d | 2027-02-08 | 2027-02-16 | PERM-ALBANY-EH1-1030 |  | 15-01-105 |
| PERM-ALBANY-EH1-1060 |  | Eor Review & Approval – Roof Truss Shop Drawings | resource dependent | 7d | 2027-02-08 | 2027-02-16 | PERM-ALBANY-EH1-1030 |  | 15-01-105 |
| PERM-ALBANY-EH1-1070 |  | Pile Contractor Procurement & Mobilization | resource dependent | 10d | 2027-03-08 | 2027-03-19 | PERM-ALBANY-EH1-1010 |  | 15-01-105 |
| PERM-ALBANY-EH1-1080 |  | Permit Issued / NTP | milestone | 0d | 2027-03-08 | 2027-03-08 | PERM-ALBANY-EH1-1010, PERM-ALBANY-EH1-1020, PERM-ALBANY-EH1-1050, PERM-ALBANY-EH1-1060, PERM-ALBANY-EH1-1040 |  | 15-01-105 |
|  | 2 | **Long-Lead Procurement** |  |  | 2027-02-17 | 2027-04-06 |  |  |  |
| BUY-ALBANY-EH1-1000 |  | Pre-engineered Roof Trusses – Submittal & Fabrication | resource dependent | 35d | 2027-02-17 | 2027-04-06 | PERM-ALBANY-EH1-1060 |  |  |
| BUY-ALBANY-EH1-1010 |  | Structural Steel Columns (hss/ts) Order | resource dependent | 5d | 2027-03-08 | 2027-03-12 | PERM-ALBANY-EH1-1010 |  |  |
| BUY-ALBANY-EH1-1020 |  | Curtain Wall / Hurricane Windows & Doors – Order | resource dependent | 10d | 2027-03-08 | 2027-03-19 | PERM-ALBANY-EH1-1010 |  |  |
| BUY-ALBANY-EH1-1030 |  | Exterior Sliding Glass Doors – Order (8 Units) | resource dependent | 10d | 2027-03-08 | 2027-03-19 | PERM-ALBANY-EH1-1010 |  |  |
| BUY-ALBANY-EH1-1040 |  | Standing Seam Metal Roofing – Order | resource dependent | 15d | 2027-03-08 | 2027-03-26 | PERM-ALBANY-EH1-1010 |  |  |
| BUY-ALBANY-EH1-1050 |  | Overhead Garage Doors – Clopay Ultragrain Order | resource dependent | 5d | 2027-03-08 | 2027-03-12 | PERM-ALBANY-EH1-1010 |  |  |
| BUY-ALBANY-EH1-1060 |  | Borano Entry Door System – Order | resource dependent | 5d | 2027-03-08 | 2027-03-12 | PERM-ALBANY-EH1-1010 |  |  |
| BUY-ALBANY-EH1-1070 |  | Bahama Shutters – Order (full Set) | resource dependent | 10d | 2027-03-08 | 2027-03-19 | PERM-ALBANY-EH1-1010 |  |  |
| BUY-ALBANY-EH1-1080 |  | Mep Equipment – Long Lead Orders | resource dependent | 15d | 2027-03-08 | 2027-03-26 | PERM-ALBANY-EH1-1010 |  |  |
| BUY-ALBANY-EH1-1090 |  | Pool Gunite Package – Order & Shop Drawings | resource dependent | 10d | 2027-03-08 | 2027-03-19 | PERM-ALBANY-EH1-1010 |  |  |
| BUY-ALBANY-EH1-1100 |  | Elevator / Dumbwaiter (if Required) – Order | resource dependent | 5d | 2027-03-08 | 2027-03-12 | PERM-ALBANY-EH1-1010 |  |  |
|  | 15 | **Construction** |  |  | 2027-03-08 | 2028-06-09 |  |  |  |
|  | 3 | **Sitework & Earthwork** |  |  | 2027-03-08 | 2027-04-05 |  |  |  |
| STW-ALBANY-EH1-1000 |  | Site Mobilization | resource dependent | 5d | 2027-03-08 | 2027-03-12 | PERM-ALBANY-EH1-1080 |  |  |
| STW-ALBANY-EH1-1010 |  | Site Clearing & Stripping | resource dependent | 5d | 2027-03-15 | 2027-03-19 | STW-ALBANY-EH1-1000 |  |  |
| STW-ALBANY-EH1-1020 |  | Rough Grading & Subgrade Prep | resource dependent | 5d | 2027-03-22 | 2027-03-26 | STW-ALBANY-EH1-1010 |  |  |
| STW-ALBANY-EH1-1030 |  | Underground Utility Coordination (civil/plumbing) | resource dependent | 5d | 2027-03-29 | 2027-04-02 | STW-ALBANY-EH1-1020 |  |  |
| STW-ALBANY-EH1-1040 |  | Subterranean Termite Treatment – Pre-slab | resource dependent | 2d | 2027-03-29 | 2027-03-30 | STW-ALBANY-EH1-1020 |  |  |
| STW-ALBANY-EH1-1050 |  | Sitework Complete | milestone | 0d | 2027-04-05 | 2027-04-05 | STW-ALBANY-EH1-1030, STW-ALBANY-EH1-1040 |  |  |

Notes:
- PERM-ALBANY-EH1-1080: Expenses: Permit Issued / Ntp - (cost)
- STW-ALBANY-EH1-1050: Expenses: Sitework Complete - (cost)

| ID | WBS | Activity | Type | Duration | Start | Finish | Predecessors |
| --- | --- | --- | --- | --- | --- | --- | --- |
|  | 1 | **Foundations & Structure** |  |  | 2027-04-05 | 2028-02-10 |  |
|  | 4 | **Deep Foundation – Auger-cast Concrete Piles** |  |  | 2027-04-05 | 2027-05-13 |  |
| FND-ALBANY-EH1-1000 |  | Pile Layout Survey & Stakeout | resource dependent | 3d | 2027-04-05 | 2027-04-07 | PERM-ALBANY-EH1-1070, STW-ALBANY-EH1-1050 |
| FND-ALBANY-EH1-1010 |  | Auger-cast Pile Drilling & Casting – Phase 1 (perimeter) | resource dependent | 10d | 2027-04-08 | 2027-04-21 | FND-ALBANY-EH1-1000 |
| FND-ALBANY-EH1-1020 |  | Auger-cast Pile Drilling & Casting – Phase 2 (interior) | resource dependent | 10d | 2027-04-22 | 2027-05-05 | FND-ALBANY-EH1-1010 |
| FND-ALBANY-EH1-1030 |  | Pile Cap Concrete – Pc2 & Pc3 Caps | resource dependent | 5d | 2027-05-06 | 2027-05-12 | FND-ALBANY-EH1-1020 |
| FND-ALBANY-EH1-1040 |  | Pile Integrity Testing / Inspection | resource dependent | 3d | 2027-05-06 | 2027-05-10 | FND-ALBANY-EH1-1020 |
| FND-ALBANY-EH1-1050 |  | Piles Complete | milestone | 0d | 2027-05-13 | 2027-05-13 | FND-ALBANY-EH1-1030, FND-ALBANY-EH1-1040 |
|  | 5 | **Grade Beams & Ground Floor Slab** |  |  | 2027-05-13 | 2027-07-09 |  |
| FND-ALBANY-EH1-1060 |  | Grade Beam Formwork & Rebar – Gb-01 (16"×24" Typ.) | resource dependent | 10d | 2027-05-13 | 2027-05-26 | FND-ALBANY-EH1-1050 |
| FND-ALBANY-EH1-1070 |  | Grade Beam Formwork & Rebar – Gb-02 (16"×24") | resource dependent | 5d | 2027-05-27 | 2027-06-02 | FND-ALBANY-EH1-1060 |
| FND-ALBANY-EH1-1080 |  | Grade Beam Formwork & Rebar – Gb-03/04 (special) | resource dependent | 5d | 2027-05-27 | 2027-06-02 | FND-ALBANY-EH1-1060 |
| FND-ALBANY-EH1-1090 |  | Mep Underground Rough-in (plumbing, Electrical Conduit) | resource dependent | 8d | 2027-05-27 | 2027-06-07 | FND-ALBANY-EH1-1060 |
| FND-ALBANY-EH1-1100 |  | Vapor Barrier – 10 Mil Polyethylene (ground Floor) | resource dependent | 2d | 2027-06-08 | 2027-06-09 | FND-ALBANY-EH1-1090 |
| FND-ALBANY-EH1-1110 |  | Grade Beam Concrete Pour – Phase 1 | resource dependent | 3d | 2027-06-10 | 2027-06-14 | FND-ALBANY-EH1-1070, FND-ALBANY-EH1-1080, FND-ALBANY-EH1-1100 |
| FND-ALBANY-EH1-1120 |  | Grade Beam Concrete Pour – Phase 2 & Pool Area Gb | resource dependent | 3d | 2027-06-15 | 2027-06-17 | FND-ALBANY-EH1-1110 |
| FND-ALBANY-EH1-1130 |  | Ground Floor Slab On Grade – Rebar & Prep | resource dependent | 5d | 2027-06-18 | 2027-06-24 | FND-ALBANY-EH1-1120 |
| FND-ALBANY-EH1-1140 |  | Ground Floor Concrete Slab Pour | resource dependent | 3d | 2027-06-25 | 2027-06-29 | FND-ALBANY-EH1-1130, STW-ALBANY-EH1-1040 |
| FND-ALBANY-EH1-1150 |  | Concrete Curing & Stripping | resource dependent | 7d | 2027-06-30 | 2027-07-08 | FND-ALBANY-EH1-1140 |
| FND-ALBANY-EH1-1160 |  | Ground Floor Slab Complete | milestone | 0d | 2027-07-09 | 2027-07-09 | FND-ALBANY-EH1-1150 |
|  | 6 | **CIP Structural Concrete – Walls & Columns** |  |  | 2027-07-09 | 2027-09-22 |  |
| FND-ALBANY-EH1-1170 |  | Cmu Stem Walls – Foundation Level (ground Fl Perimeter) | resource dependent | 10d | 2027-07-09 | 2027-07-22 | FND-ALBANY-EH1-1160 |
| FND-ALBANY-EH1-1180 |  | Cip Concrete Columns – Ground Floor | resource dependent | 10d | 2027-07-09 | 2027-07-22 | FND-ALBANY-EH1-1160 |
| FND-ALBANY-EH1-1190 |  | Cip 6" & 8" Concrete Walls – Ground Floor | resource dependent | 8d | 2027-07-23 | 2027-08-03 | FND-ALBANY-EH1-1180 |
| FND-ALBANY-EH1-1200 |  | Steel Column Installation (hss/ts) – Ground Floor | resource dependent | 3d | 2027-07-23 | 2027-07-27 | BUY-ALBANY-EH1-1010, FND-ALBANY-EH1-1180 |
| FND-ALBANY-EH1-1210 |  | Ground Floor Beams – Formwork & Rebar (B1-01 Thru B1-11) | resource dependent | 10d | 2027-08-04 | 2027-08-17 | FND-ALBANY-EH1-1190, FND-ALBANY-EH1-1200 |
| FND-ALBANY-EH1-1220 |  | Balcony Beam B1-06 – Upturned Cast-in Core Detail | resource dependent | 5d | 2027-08-18 | 2027-08-24 | FND-ALBANY-EH1-1210 |
| FND-ALBANY-EH1-1230 |  | First Floor Framing Slab – Rebar, Shores & Prep | resource dependent | 10d | 2027-08-25 | 2027-09-07 | FND-ALBANY-EH1-1210, FND-ALBANY-EH1-1220 |
| FND-ALBANY-EH1-1240 |  | First Floor Concrete Slab Pour | resource dependent | 3d | 2027-09-08 | 2027-09-10 | FND-ALBANY-EH1-1230 |
| FND-ALBANY-EH1-1250 |  | First Floor Slab Curing (7 Days) & Shore Release | resource dependent | 7d | 2027-09-13 | 2027-09-21 | FND-ALBANY-EH1-1240 |
| FND-ALBANY-EH1-1260 |  | First Floor Structure Complete – Top-out Milestone | milestone | 0d | 2027-09-22 | 2027-09-22 | FND-ALBANY-EH1-1250 |

Notes:
- FND-ALBANY-EH1-1050: Expenses: Piles Complete - (cost)
- FND-ALBANY-EH1-1160: Expenses: Ground Floor Slab Complete - (cost)
- FND-ALBANY-EH1-1260: Expenses: First Floor Structure Complete – Top-out Milestone - (cost)

| ID | WBS | Activity | Type | Duration | Start | Finish | Predecessors |
| --- | --- | --- | --- | --- | --- | --- | --- |
|  | 7 | **Upper Floor Concrete Structure (2nd Floor & Walls)** |  |  | 2027-09-22 | 2027-12-07 |  |
| FND-ALBANY-EH1-1270 |  | Cip Columns – Upper Floor (c16-c24 Schedule) | resource dependent | 8d | 2027-09-22 | 2027-10-01 | FND-ALBANY-EH1-1260 |
| FND-ALBANY-EH1-1280 |  | Cip 6" Concrete Walls – Upper Floor | resource dependent | 8d | 2027-10-04 | 2027-10-13 | FND-ALBANY-EH1-1270 |
| FND-ALBANY-EH1-1290 |  | Cmu Infill Walls – Upper Level | resource dependent | 10d | 2027-10-04 | 2027-10-15 | FND-ALBANY-EH1-1270 |
| FND-ALBANY-EH1-1300 |  | Upper Floor Beams – Formwork & Rebar (b2-01 Thru B2-04) | resource dependent | 8d | 2027-10-18 | 2027-10-27 | FND-ALBANY-EH1-1280, FND-ALBANY-EH1-1290 |
| FND-ALBANY-EH1-1310 |  | Second Floor / Roof Slab – Rebar & Prep (7" & 8" Slabs) | resource dependent | 10d | 2027-10-28 | 2027-11-10 | FND-ALBANY-EH1-1300 |
| FND-ALBANY-EH1-1320 |  | Second Floor Concrete Slab Pour | resource dependent | 3d | 2027-11-11 | 2027-11-15 | FND-ALBANY-EH1-1310 |
| FND-ALBANY-EH1-1330 |  | Second Floor Slab Curing & Shore Release | resource dependent | 7d | 2027-11-16 | 2027-11-24 | FND-ALBANY-EH1-1320 |
| FND-ALBANY-EH1-1340 |  | T-beam Upstand Pours (balcony / Loggia) | resource dependent | 5d | 2027-11-25 | 2027-12-01 | FND-ALBANY-EH1-1330 |
| FND-ALBANY-EH1-1350 |  | Concrete Stair – Ground To 2nd Floor (cantilever Type) | resource dependent | 8d | 2027-11-25 | 2027-12-06 | FND-ALBANY-EH1-1330 |
| FND-ALBANY-EH1-1360 |  | Exterior Concrete Stair (pool Level To Covered Deck) | resource dependent | 5d | 2027-11-25 | 2027-12-01 | FND-ALBANY-EH1-1330 |
| FND-ALBANY-EH1-1370 |  | Upper Floor Structure Complete | milestone | 0d | 2027-12-07 | 2027-12-07 | FND-ALBANY-EH1-1340, FND-ALBANY-EH1-1350, FND-ALBANY-EH1-1360 |
|  | 8 | **Roof Framing & Sheathing** |  |  | 2027-12-07 | 2028-02-10 |  |
| FRM-ALBANY-EH1-1000 |  | Pre-engineered Roof Trusses – Delivery & Staging | resource dependent | 3d | 2027-12-07 | 2027-12-09 | BUY-ALBANY-EH1-1000, FND-ALBANY-EH1-1370 |
| FRM-ALBANY-EH1-1010 |  | 3×6 Top Plate Installation (anchor Bolts @ 24" O.c.) | resource dependent | 3d | 2027-12-07 | 2027-12-09 | FND-ALBANY-EH1-1370 |
| FRM-ALBANY-EH1-1020 |  | Roof Truss Erection – Main House | resource dependent | 8d | 2027-12-10 | 2027-12-21 | FRM-ALBANY-EH1-1000, FRM-ALBANY-EH1-1010 |
| FRM-ALBANY-EH1-1030 |  | Roof Truss Erection – Garage Wing & Intermediate | resource dependent | 5d | 2027-12-22 | 2027-12-28 | FRM-ALBANY-EH1-1020 |
| FRM-ALBANY-EH1-1040 |  | 3×8 Cypress Rafter Tails – Scab Onto Trusses | resource dependent | 5d | 2027-12-22 | 2027-12-28 | FRM-ALBANY-EH1-1020 |
| FRM-ALBANY-EH1-1050 |  | Hip/valley/ridge Framing & 2×6 Blocking | resource dependent | 5d | 2027-12-29 | 2028-01-04 | FRM-ALBANY-EH1-1030, FRM-ALBANY-EH1-1040 |
| FRM-ALBANY-EH1-1060 |  | Girder Truss Connections & Lateral Bracing | resource dependent | 3d | 2028-01-05 | 2028-01-07 | FRM-ALBANY-EH1-1050 |
| FRM-ALBANY-EH1-1070 |  | Roof Sheathing – 3/4" Osb/plywood (5/12 Pitch) | resource dependent | 5d | 2028-01-10 | 2028-01-14 | FRM-ALBANY-EH1-1050, FRM-ALBANY-EH1-1060 |
| FRM-ALBANY-EH1-1080 |  | Dry-in – Self-adhesive Modified Asphalt Underlayment | resource dependent | 3d | 2028-01-17 | 2028-01-19 | FRM-ALBANY-EH1-1070 |
| FRM-ALBANY-EH1-1090 |  | Dry-in Milestone | milestone | 0d | 2028-01-20 | 2028-01-20 | FRM-ALBANY-EH1-1080 |
| FRM-ALBANY-EH1-1100 |  | Azek Fascia, Closer Boards & 1×4 Trim | resource dependent | 5d | 2028-01-20 | 2028-01-26 | FRM-ALBANY-EH1-1080 |
| FRM-ALBANY-EH1-1110 |  | Standing Seam Metal Roofing – Installation | resource dependent | 10d | 2028-01-20 | 2028-02-02 | BUY-ALBANY-EH1-1040, FRM-ALBANY-EH1-1080 |
| FRM-ALBANY-EH1-1120 |  | Galv. Metal Drip Edge, Box Gutter & Downspouts | resource dependent | 5d | 2028-02-03 | 2028-02-09 | FRM-ALBANY-EH1-1110 |
| FRM-ALBANY-EH1-1130 |  | Roof Flashing – Headwall, Step, Valley & Rake | resource dependent | 5d | 2028-02-03 | 2028-02-09 | FRM-ALBANY-EH1-1110 |
| FRM-ALBANY-EH1-1140 |  | Roof Complete | milestone | 0d | 2028-02-10 | 2028-02-10 | FRM-ALBANY-EH1-1120, FRM-ALBANY-EH1-1130 |

Notes:
- FND-ALBANY-EH1-1370: Expenses: Upper Floor Structure Complete - (cost)
- FRM-ALBANY-EH1-1090: Expenses: Dry-in Milestone - (cost)
- FRM-ALBANY-EH1-1140: Expenses: Roof Complete - (cost)

| ID | WBS | Activity | Type | Duration | Start | Finish | Predecessors |
| --- | --- | --- | --- | --- | --- | --- | --- |
|  | 9 | **Exterior Envelope** |  |  | 2027-12-07 | 2028-02-07 |  |
| EV-ALBANY-EH1-1000 |  | Cmu Exterior Walls – Upper Level Completion & Grouting | resource dependent | 10d | 2027-12-07 | 2027-12-20 | FND-ALBANY-EH1-1370 |
| EV-ALBANY-EH1-1010 |  | Concrete Column Formwork & Pour (exterior 12×12 Posts) | resource dependent | 5d | 2027-12-07 | 2027-12-13 | FND-ALBANY-EH1-1370 |
| EV-ALBANY-EH1-1020 |  | Window & Door Rough Openings – Frame & Buck Installation | resource dependent | 8d | 2027-12-21 | 2027-12-30 | EV-ALBANY-EH1-1000, EV-ALBANY-EH1-1010 |
| EV-ALBANY-EH1-1030 |  | Water & Air Barrier – Full Exterior Wrap | resource dependent | 5d | 2027-12-31 | 2028-01-06 | EV-ALBANY-EH1-1020 |
| EV-ALBANY-EH1-1040 |  | Metal Furring – 2.5" C-channel At Exterior Walls | resource dependent | 5d | 2028-01-07 | 2028-01-13 | EV-ALBANY-EH1-1030 |
| EV-ALBANY-EH1-1050 |  | Exterior Stucco – Scratch Coat (2-coat Min 5/8") | resource dependent | 8d | 2028-01-07 | 2028-01-18 | EV-ALBANY-EH1-1030 |
| EV-ALBANY-EH1-1060 |  | Exterior Stucco – Finish Coat & Smooth Finish | resource dependent | 5d | 2028-01-19 | 2028-01-25 | EV-ALBANY-EH1-1050 |
| EV-ALBANY-EH1-1070 |  | 1×6 T&g Cypress Cladding – M2/s2 Wall Sections | resource dependent | 8d | 2028-01-19 | 2028-01-28 | EV-ALBANY-EH1-1050 |
| EV-ALBANY-EH1-1080 |  | Weep Screed & Perforated Base Installation | resource dependent | 3d | 2028-01-19 | 2028-01-21 | EV-ALBANY-EH1-1050 |
| EV-ALBANY-EH1-1090 |  | Exterior Paint – Stucco & Trim Finish Coats | resource dependent | 5d | 2028-01-31 | 2028-02-04 | EV-ALBANY-EH1-1060, EV-ALBANY-EH1-1070 |
| EV-ALBANY-EH1-1100 |  | Exterior Envelope Complete | milestone | 0d | 2028-02-07 | 2028-02-07 | EV-ALBANY-EH1-1080, EV-ALBANY-EH1-1090 |
|  | 10 | **Windows & Exterior Doors** |  |  | 2028-01-07 | 2028-02-14 |  |
| WD-ALBANY-EH1-1000 |  | Hurricane-rated Curtain Wall System | resource dependent | 8d | 2028-01-07 | 2028-01-18 | BUY-ALBANY-EH1-1020, EV-ALBANY-EH1-1030 |
| WD-ALBANY-EH1-1010 |  | Aluminum Casement Windows | resource dependent | 8d | 2028-01-07 | 2028-01-18 | BUY-ALBANY-EH1-1020, EV-ALBANY-EH1-1030 |
| WD-ALBANY-EH1-1020 |  | Exterior Sliding Glass Doors | resource dependent | 5d | 2028-01-07 | 2028-01-13 | BUY-ALBANY-EH1-1030, EV-ALBANY-EH1-1030 |
| WD-ALBANY-EH1-1030 |  | Exterior Sliding Glass Doors | resource dependent | 5d | 2028-01-07 | 2028-01-13 | BUY-ALBANY-EH1-1030, EV-ALBANY-EH1-1030 |
| WD-ALBANY-EH1-1040 |  | Front Entry Door – Borano Sapporo Install | resource dependent | 3d | 2028-01-07 | 2028-01-11 | BUY-ALBANY-EH1-1060, EV-ALBANY-EH1-1030 |
| WD-ALBANY-EH1-1050 |  | Overhead Garage Doors | resource dependent | 2d | 2028-01-07 | 2028-01-10 | BUY-ALBANY-EH1-1050, EV-ALBANY-EH1-1030 |
| WD-ALBANY-EH1-1060 |  | Precast Concrete Window Sills & Trim Casing | resource dependent | 5d | 2028-01-19 | 2028-01-25 | WD-ALBANY-EH1-1000, WD-ALBANY-EH1-1010 |
| WD-ALBANY-EH1-1070 |  | Exterior Door Hardware – Installation | resource dependent | 3d | 2028-01-19 | 2028-01-21 | WD-ALBANY-EH1-1000, WD-ALBANY-EH1-1010, WD-ALBANY-EH1-1020, WD-ALBANY-EH1-1030, WD-ALBANY-EH1-1040 |
| WD-ALBANY-EH1-1080 |  | Hurricane Bahama Shutters | resource dependent | 5d | 2028-02-07 | 2028-02-11 | BUY-ALBANY-EH1-1070, EV-ALBANY-EH1-1090 |
| WD-ALBANY-EH1-1090 |  | Windows & Doors Complete | milestone | 0d | 2028-02-14 | 2028-02-14 | WD-ALBANY-EH1-1080, WD-ALBANY-EH1-1060, WD-ALBANY-EH1-1070 |
|  | 11 | **Interiors** |  |  | 2027-07-09 | 2028-06-07 |  |
|  | 1 | **Mep Rough-in** |  |  | 2027-07-09 | 2027-12-24 |  |
| MEP-ALBANY-EH1-1000 |  | Plumbing Rough-in – Ground Floor & Under Slab | resource dependent | 10d | 2027-07-09 | 2027-07-22 | FND-ALBANY-EH1-1160 |
| MEP-ALBANY-EH1-1010 |  | Electrical Conduit Rough-in – Ground Floor | resource dependent | 8d | 2027-07-09 | 2027-07-20 | FND-ALBANY-EH1-1160 |
| MEP-ALBANY-EH1-1020 |  | Plumbing Rough-in – First Floor Walls & Ceilings | resource dependent | 10d | 2027-09-22 | 2027-10-05 | FND-ALBANY-EH1-1260 |
| MEP-ALBANY-EH1-1030 |  | Electrical Conduit Rough-in – First Floor | resource dependent | 8d | 2027-09-22 | 2027-10-01 | FND-ALBANY-EH1-1260 |
| MEP-ALBANY-EH1-1040 |  | Hvac Ductwork – First Floor | resource dependent | 10d | 2027-09-22 | 2027-10-05 | FND-ALBANY-EH1-1260 |
| MEP-ALBANY-EH1-1050 |  | Plumbing Sleeve Penetrations – Cip Slabs | resource dependent | 5d | 2027-11-11 | 2027-11-17 | FND-ALBANY-EH1-1230, FND-ALBANY-EH1-1310 |
| MEP-ALBANY-EH1-1060 |  | Plumbing Rough-in – Second Floor | resource dependent | 8d | 2027-12-07 | 2027-12-16 | FND-ALBANY-EH1-1370 |
| MEP-ALBANY-EH1-1070 |  | Electrical Conduit Rough-in – Second Floor | resource dependent | 8d | 2027-12-07 | 2027-12-16 | FND-ALBANY-EH1-1370 |
| MEP-ALBANY-EH1-1080 |  | Hvac Ductwork – Second Floor | resource dependent | 8d | 2027-12-07 | 2027-12-16 | FND-ALBANY-EH1-1370 |
| MEP-ALBANY-EH1-1090 |  | Fire Hose Reel Cabinet – Semi-recessed | resource dependent | 3d | 2027-12-21 | 2027-12-23 | EV-ALBANY-EH1-1000 |
| MEP-ALBANY-EH1-1100 |  | Mep Rough-in Complete / Inspections | milestone | 0d | 2027-12-24 | 2027-12-24 | MEP-ALBANY-EH1-1020, MEP-ALBANY-EH1-1060, MEP-ALBANY-EH1-1070, MEP-ALBANY-EH1-1040, MEP-ALBANY-EH1-1080, MEP-ALBANY-EH1-1090 |

Notes:
- EV-ALBANY-EH1-1100: Expenses: Exterior Envelope Complete - (cost)
- WD-ALBANY-EH1-1090: Expenses: Windows & Doors Complete - (cost)
- MEP-ALBANY-EH1-1100: Expenses: Mep Rough-in Complete / Inspections - (cost)

| ID | WBS | Activity | Type | Duration | Start | Finish | Predecessors |
| --- | --- | --- | --- | --- | --- | --- | --- |
|  | 2 | **Insulation** |  |  | 2027-12-24 | 2028-02-17 |  |
| INS-ALBANY-EH1-1000 |  | Batt Insulation – Exterior Wall Cavities | resource dependent | 5d | 2027-12-24 | 2027-12-30 | MEP-ALBANY-EH1-1100 |
| INS-ALBANY-EH1-1010 |  | Soundproofing Insulation – D2 Acoustic Wall Partitions | resource dependent | 3d | 2027-12-24 | 2027-12-28 | MEP-ALBANY-EH1-1100 |
| INS-ALBANY-EH1-1020 |  | Icynene Spray Foam Insulation – Roof/attic (all Zones) | resource dependent | 5d | 2028-02-10 | 2028-02-16 | FRM-ALBANY-EH1-1140, MEP-ALBANY-EH1-1100 |
| INS-ALBANY-EH1-1030 |  | Insulation Complete | milestone | 0d | 2028-02-17 | 2028-02-17 | INS-ALBANY-EH1-1020, INS-ALBANY-EH1-1000, INS-ALBANY-EH1-1010 |
|  | 3 | **Interior Framing & Drywall** |  |  | 2027-12-24 | 2028-03-24 |  |
| INF-ALBANY-EH1-1000 |  | Metal Stud Framing – Ground & First Floor Partitions | resource dependent | 10d | 2027-12-24 | 2028-01-06 | MEP-ALBANY-EH1-1100 |
| INF-ALBANY-EH1-1010 |  | Metal Stud Framing – Second Floor Partitions | resource dependent | 8d | 2027-12-24 | 2028-01-04 | MEP-ALBANY-EH1-1100 |
| INF-ALBANY-EH1-1020 |  | 7/8" Stucco Ceiling – Loggia & Pool Porch Underside | resource dependent | 5d | 2028-02-10 | 2028-02-16 | FRM-ALBANY-EH1-1140 |
| INF-ALBANY-EH1-1030 |  | Drywall Hang – Ground & First Floor | resource dependent | 8d | 2028-02-17 | 2028-02-28 | INF-ALBANY-EH1-1000, INS-ALBANY-EH1-1030 |
| INF-ALBANY-EH1-1040 |  | Drywall Hang – Second Floor | resource dependent | 8d | 2028-02-17 | 2028-02-28 | INF-ALBANY-EH1-1010, INS-ALBANY-EH1-1030 |
| INF-ALBANY-EH1-1050 |  | Drywall Tape, Mud & Sand – First Floor (3 Coats) | resource dependent | 10d | 2028-02-29 | 2028-03-13 | INF-ALBANY-EH1-1030 |
| INF-ALBANY-EH1-1060 |  | Drywall Tape, Mud & Sand – Second Floor (3 Coats) | resource dependent | 10d | 2028-02-29 | 2028-03-13 | INF-ALBANY-EH1-1040 |
| INF-ALBANY-EH1-1070 |  | 1×6 Pine T&g Ceiling – Porch, Loggia, Covered Walkway | resource dependent | 5d | 2028-02-29 | 2028-03-06 | FRM-ALBANY-EH1-1140, INF-ALBANY-EH1-1030 |
| INF-ALBANY-EH1-1080 |  | Tray Ceiling Framing & Gwb – First Floor (great Room, Etc.) | resource dependent | 8d | 2028-03-14 | 2028-03-23 | INF-ALBANY-EH1-1050 |
| INF-ALBANY-EH1-1090 |  | Framing & Drywall Complete | milestone | 0d | 2028-03-24 | 2028-03-24 | INF-ALBANY-EH1-1060, INF-ALBANY-EH1-1080, INF-ALBANY-EH1-1070, INF-ALBANY-EH1-1020 |
|  | 4 | **Interior Finishes** |  |  | 2028-03-24 | 2028-05-02 |  |
| INFN-ALBANY-EH1-1000 |  | Interior Paint – Prime Coat (all Rooms) | resource dependent | 5d | 2028-03-24 | 2028-03-30 | INF-ALBANY-EH1-1090 |
| INFN-ALBANY-EH1-1010 |  | Tile Work – Owner's Bath (floor & Walls) | resource dependent | 8d | 2028-03-24 | 2028-04-04 | INF-ALBANY-EH1-1090 |
| INFN-ALBANY-EH1-1020 |  | Tile Work – All Other Bathrooms (7 Baths) | resource dependent | 15d | 2028-03-24 | 2028-04-13 | INF-ALBANY-EH1-1090 |
| INFN-ALBANY-EH1-1030 |  | Tile Work – Kitchen Backsplash & Utility Areas | resource dependent | 5d | 2028-03-24 | 2028-03-30 | INF-ALBANY-EH1-1090 |
| INFN-ALBANY-EH1-1040 |  | Flooring – Stone / Tile (living, Dining, Kitchen, Halls) | resource dependent | 10d | 2028-03-31 | 2028-04-13 | INFN-ALBANY-EH1-1000 |
| INFN-ALBANY-EH1-1050 |  | Flooring – Bedrooms & Upper Floor | resource dependent | 10d | 2028-03-31 | 2028-04-13 | INFN-ALBANY-EH1-1000 |
| INFN-ALBANY-EH1-1060 |  | Pedestal Paver System – Covered Deck & Balcony | resource dependent | 5d | 2028-03-31 | 2028-04-06 | INFN-ALBANY-EH1-1000 |
| INFN-ALBANY-EH1-1070 |  | Crown Moulding & Baseboard – First Floor | resource dependent | 8d | 2028-03-31 | 2028-04-11 | INFN-ALBANY-EH1-1000 |
| INFN-ALBANY-EH1-1080 |  | Crown Moulding & Baseboard – Second Floor | resource dependent | 8d | 2028-03-31 | 2028-04-11 | INFN-ALBANY-EH1-1000 |
| INFN-ALBANY-EH1-1090 |  | Masonry Waterproofing Paint – Garage & Basement Areas | resource dependent | 3d | 2028-03-31 | 2028-04-04 | INFN-ALBANY-EH1-1000 |
| INFN-ALBANY-EH1-1100 |  | Interior Doors & Hardware | resource dependent | 4d | 2028-04-14 | 2028-04-19 | INFN-ALBANY-EH1-1050, INFN-ALBANY-EH1-1010, INFN-ALBANY-EH1-1020, INFN-ALBANY-EH1-1030 |
| INFN-ALBANY-EH1-1110 |  | Interior Paint – Finish Coats (all Rooms) | resource dependent | 8d | 2028-04-20 | 2028-05-01 | INFN-ALBANY-EH1-1010, INFN-ALBANY-EH1-1020, INFN-ALBANY-EH1-1030, INFN-ALBANY-EH1-1040, INFN-ALBANY-EH1-1050, INFN-ALBANY-EH1-1070, INFN-ALBANY-EH1-1080, INFN-ALBANY-EH1-1100 |
| INFN-ALBANY-EH1-1120 |  | Interior Finishes Complete | milestone | 0d | 2028-05-02 | 2028-05-02 | INFN-ALBANY-EH1-1110, INFN-ALBANY-EH1-1090 |

Notes:
- INS-ALBANY-EH1-1030: Expenses: Insulation Complete - (cost)
- INF-ALBANY-EH1-1090: Expenses: Framing & Drywall Complete - (cost)
- INFN-ALBANY-EH1-1120: Expenses: Interior Finishes Complete - (cost)

| ID | WBS | Activity | Type | Duration | Start | Finish | Predecessors |
| --- | --- | --- | --- | --- | --- | --- | --- |
|  | 5 | **Cabinetry & Millwork** |  |  | 2028-05-02 | 2028-05-26 |  |
| INFN-ALBANY-EH1-1130 |  | Kitchen Cabinetry – Lower & Upper Install | resource dependent | 10d | 2028-05-02 | 2028-05-15 | INFN-ALBANY-EH1-1110 |
| INFN-ALBANY-EH1-1140 |  | Butler's Pantry & Morning Bar – Cabinet Install | resource dependent | 5d | 2028-05-02 | 2028-05-08 | INFN-ALBANY-EH1-1110 |
| INFN-ALBANY-EH1-1150 |  | Owner's Bath Vanities & Make-up Vanity | resource dependent | 5d | 2028-05-02 | 2028-05-08 | INFN-ALBANY-EH1-1110 |
| INFN-ALBANY-EH1-1160 |  | All Other Bath Vanities (7 Baths) | resource dependent | 8d | 2028-05-02 | 2028-05-11 | INFN-ALBANY-EH1-1110 |
| INFN-ALBANY-EH1-1170 |  | Wine Room – Custom Millwork & Racking | resource dependent | 5d | 2028-05-02 | 2028-05-08 | INFN-ALBANY-EH1-1110 |
| INFN-ALBANY-EH1-1180 |  | Owner's Closet – Built-in Cabinetry & Dresser Island | resource dependent | 5d | 2028-05-02 | 2028-05-08 | INFN-ALBANY-EH1-1110 |
| INFN-ALBANY-EH1-1190 |  | All Bedroom Closets & Av Data Closet | resource dependent | 5d | 2028-05-02 | 2028-05-08 | INFN-ALBANY-EH1-1110 |
| INFN-ALBANY-EH1-1200 |  | Bar – Upper Floor (covered Deck / Bar Area) | resource dependent | 5d | 2028-05-02 | 2028-05-08 | INFN-ALBANY-EH1-1110 |
| INFN-ALBANY-EH1-1210 |  | Countertops – Kitchen, Baths, Bars (stone/quartz) | resource dependent | 8d | 2028-05-16 | 2028-05-25 | INFN-ALBANY-EH1-1130, INFN-ALBANY-EH1-1140, INFN-ALBANY-EH1-1150, INFN-ALBANY-EH1-1160 |
| INFN-ALBANY-EH1-1220 |  | Cabinetry & Millwork Complete | milestone | 0d | 2028-05-26 | 2028-05-26 | INFN-ALBANY-EH1-1170, INFN-ALBANY-EH1-1180, INFN-ALBANY-EH1-1190, INFN-ALBANY-EH1-1200, INFN-ALBANY-EH1-1210 |
|  | 6 | **Mep Trim-out** |  |  | 2028-05-02 | 2028-06-07 |  |
| MEP-ALBANY-EH1-1200 |  | Electrical Devices & Panels – Trim Out | resource dependent | 8d | 2028-05-02 | 2028-05-11 | INFN-ALBANY-EH1-1110 |
| MEP-ALBANY-EH1-1210 |  | Hvac Equipment & Diffusers – Trim Out | resource dependent | 8d | 2028-05-02 | 2028-05-11 | INFN-ALBANY-EH1-1110 |
| MEP-ALBANY-EH1-1220 |  | Lighting Fixtures – Interior | resource dependent | 10d | 2028-05-02 | 2028-05-15 | INFN-ALBANY-EH1-1110 |
| MEP-ALBANY-EH1-1230 |  | Av / Smart Home Systems Install (media/game Room) | resource dependent | 5d | 2028-05-12 | 2028-05-18 | MEP-ALBANY-EH1-1200 |
| MEP-ALBANY-EH1-1240 |  | Appliances | resource dependent | 5d | 2028-05-16 | 2028-05-22 | INFN-ALBANY-EH1-1130 |
| MEP-ALBANY-EH1-1250 |  | Plumbing Fixtures | resource dependent | 5d | 2028-05-26 | 2028-06-01 | INFN-ALBANY-EH1-1220 |
| MEP-ALBANY-EH1-1260 |  | Plumbing Fixtures | resource dependent | 8d | 2028-05-26 | 2028-06-06 | INFN-ALBANY-EH1-1220 |
| MEP-ALBANY-EH1-1270 |  | Water Heaters | resource dependent | 3d | 2028-05-26 | 2028-05-30 | INFN-ALBANY-EH1-1220 |
| MEP-ALBANY-EH1-1280 |  | Mep Trim-out Complete | milestone | 0d | 2028-06-07 | 2028-06-07 | MEP-ALBANY-EH1-1250, MEP-ALBANY-EH1-1260, MEP-ALBANY-EH1-1240, MEP-ALBANY-EH1-1270, MEP-ALBANY-EH1-1200, MEP-ALBANY-EH1-1210, MEP-ALBANY-EH1-1220, MEP-ALBANY-EH1-1230 |
|  | 12 | **Pool & Spa – Structural & Shell** |  |  | 2027-07-09 | 2027-08-26 |  |
| P&S-ALBANY-EH1-1000 |  | Pool & Spa Excavation & Sub-base Prep | resource dependent | 5d | 2027-07-09 | 2027-07-15 | FND-ALBANY-EH1-1160 |
| P&S-ALBANY-EH1-1010 |  | Pool Grade Beams & Stem Wall Rebar | resource dependent | 5d | 2027-07-16 | 2027-07-22 | P&S-ALBANY-EH1-1000 |
| P&S-ALBANY-EH1-1020 |  | Pool Cip Slab – 8" Thick Pour | resource dependent | 3d | 2027-07-23 | 2027-07-27 | P&S-ALBANY-EH1-1010 |
| P&S-ALBANY-EH1-1030 |  | Pool Gunite Walls | resource dependent | 5d | 2027-07-28 | 2027-08-03 | P&S-ALBANY-EH1-1020, BUY-ALBANY-EH1-1090 |
| P&S-ALBANY-EH1-1040 |  | Spa Shell – Gunite Construction | resource dependent | 3d | 2027-08-04 | 2027-08-06 | P&S-ALBANY-EH1-1030 |
| P&S-ALBANY-EH1-1050 |  | Pool Plumbing Rough-in | resource dependent | 4d | 2027-08-04 | 2027-08-09 | P&S-ALBANY-EH1-1030 |
| P&S-ALBANY-EH1-1060 |  | Pool Shelf Slab – 6" Gunite Shelf | resource dependent | 3d | 2027-08-04 | 2027-08-06 | P&S-ALBANY-EH1-1030 |
| P&S-ALBANY-EH1-1070 |  | Pool & Spa Electrical Rough-in | resource dependent | 3d | 2027-08-04 | 2027-08-06 | P&S-ALBANY-EH1-1030 |
| P&S-ALBANY-EH1-1080 |  | Pool Waterproofing | resource dependent | 3d | 2027-08-09 | 2027-08-11 | P&S-ALBANY-EH1-1030, P&S-ALBANY-EH1-1040 |
| P&S-ALBANY-EH1-1090 |  | Pool Equipment Room / Mechanical Install | resource dependent | 5d | 2027-08-12 | 2027-08-18 | P&S-ALBANY-EH1-1050, P&S-ALBANY-EH1-1080, P&S-ALBANY-EH1-1070 |
| P&S-ALBANY-EH1-1100 |  | Pool Tile, Coping & Finish (by Owner Selection) | resource dependent | 10d | 2027-08-12 | 2027-08-25 | P&S-ALBANY-EH1-1080, P&S-ALBANY-EH1-1060 |
| P&S-ALBANY-EH1-1110 |  | Pool & Spa Shell Complete | milestone | 0d | 2027-08-26 | 2027-08-26 | P&S-ALBANY-EH1-1090, P&S-ALBANY-EH1-1100 |

Notes:
- INFN-ALBANY-EH1-1220: Expenses: Cabinetry & Millwork Complete - (cost)
- MEP-ALBANY-EH1-1280: Expenses: Mep Trim-out Complete - (cost)
- P&S-ALBANY-EH1-1110: Expenses: Pool & Spa Shell Complete - (cost)

| ID | WBS | Activity | Type | Duration | Start | Finish | Predecessors |
| --- | --- | --- | --- | --- | --- | --- | --- |
|  | 13 | **Exterior Site, Hardscape & Landscape** |  |  | 2028-02-07 | 2028-03-09 |  |
| SITE-ALBANY-EH1-1000 |  | Privacy Screen Walls – Horizontal Wooden Slats | resource dependent | 5d | 2028-02-07 | 2028-02-11 | EV-ALBANY-EH1-1090 |
| SITE-ALBANY-EH1-1010 |  | Boundary Fence & Gate – All Sides | resource dependent | 8d | 2028-02-07 | 2028-02-16 | EV-ALBANY-EH1-1090 |
| SITE-ALBANY-EH1-1020 |  | Covered Walkway – Concrete & Roofing | resource dependent | 5d | 2028-02-10 | 2028-02-16 | FRM-ALBANY-EH1-1120 |
| SITE-ALBANY-EH1-1030 |  | Driveway & Motor Court – Pavement Base & Finish | resource dependent | 10d | 2028-02-14 | 2028-02-25 | WD-ALBANY-EH1-1090 |
| SITE-ALBANY-EH1-1040 |  | Loggia & Porch – Concrete Deck & Column Finish | resource dependent | 5d | 2028-02-14 | 2028-02-18 | WD-ALBANY-EH1-1090, P&S-ALBANY-EH1-1110 |
| SITE-ALBANY-EH1-1050 |  | Landscape & Hardscape (by Others / Landscape Architect) | resource dependent | 15d | 2028-02-17 | 2028-03-08 | SITE-ALBANY-EH1-1010 |
| SITE-ALBANY-EH1-1060 |  | Pool Deck – Pedestal Paver Final Lay | resource dependent | 5d | 2028-02-21 | 2028-02-25 | SITE-ALBANY-EH1-1040, P&S-ALBANY-EH1-1100 |
| SITE-ALBANY-EH1-1070 |  | Exterior Lighting & Site Electrical | resource dependent | 5d | 2028-02-28 | 2028-03-03 | SITE-ALBANY-EH1-1030, SITE-ALBANY-EH1-1010 |
| SITE-ALBANY-EH1-1080 |  | Exterior Site Complete | milestone | 0d | 2028-03-09 | 2028-03-09 | SITE-ALBANY-EH1-1050, SITE-ALBANY-EH1-1060, SITE-ALBANY-EH1-1070 |
|  | 14 | **Final Inspections** |  |  | 2028-05-12 | 2028-06-09 |  |
| FNL-ALBANY-EH1-1000 |  | Final Electrical Inspection | resource dependent | 3d | 2028-05-12 | 2028-05-16 | MEP-ALBANY-EH1-1200 |
| FNL-ALBANY-EH1-1010 |  | Final Mech Inspection | resource dependent | 1d | 2028-05-12 | 2028-05-12 | MEP-ALBANY-EH1-1210 |
| FNL-ALBANY-EH1-1020 |  | Final Plumbing Inspection | resource dependent | 1d | 2028-05-17 | 2028-05-17 | FNL-ALBANY-EH1-1000 |
| FNL-ALBANY-EH1-1030 |  | Final Building Inspection | resource dependent | 1d | 2028-05-18 | 2028-05-18 | FNL-ALBANY-EH1-1020, FNL-ALBANY-EH1-1000, SITE-ALBANY-EH1-1080, FNL-ALBANY-EH1-1010, P&S-ALBANY-EH1-1110 |
| FNL-ALBANY-EH1-1040 |  | Certificate of Occupancy | resource dependent | 1d | 2028-05-19 | 2028-05-19 | FNL-ALBANY-EH1-1030, EV-ALBANY-EH1-1100 |
| FNL-ALBANY-EH1-1050 |  | Rough Clean | resource dependent | 4d | 2028-05-22 | 2028-05-25 | FNL-ALBANY-EH1-1040 |
| FNL-ALBANY-EH1-1060 |  | Owner Punch Walk-Through | resource dependent | 1d | 2028-05-26 | 2028-05-26 | FNL-ALBANY-EH1-1050 |
| FNL-ALBANY-EH1-1070 |  | Punch List Completion | resource dependent | 5d | 2028-05-29 | 2028-06-02 | FNL-ALBANY-EH1-1060 |
| FNL-ALBANY-EH1-1080 |  | Final Cleaning | resource dependent | 3d | 2028-06-05 | 2028-06-07 | FNL-ALBANY-EH1-1070 |
| FNL-ALBANY-EH1-1090 |  | Owner Acceptance | resource dependent | 2d | 2028-06-08 | 2028-06-09 | FNL-ALBANY-EH1-1080 |
|  | 3 | **Closeout** |  |  | 2026-09-07 | 2026-10-02 |  |
| CLO-ALBANY-EH1-1000 |  | Closeout |  | 20d | 2026-09-07 | 2026-10-02 |  |

Notes:
- SITE-ALBANY-EH1-1080: Expenses: Exterior Site Complete - (cost)

## Activity codes

| Code | Value | Meaning |
| --- | --- | --- |
| HB Cost Code | 15-01-105 | PERMITS |
